# Project Schedule

How a schedule from MS Project changed from version to version. A marks actual dates.

## Version 1 (data date 2024-09-25, saved 2024-09-25, file 20240925 - Initial Project Schedule.mpp)

| ID | WBS | Task | Duration | Start | Finish | Predecessors | Complete | Total float |
| --- | --- | --- | --- | --- | --- | --- | --- | --- |
| 1 | 1 | **Project Management** | 95d | 2024-09-23 | 2025-01-31 |  |  |  |
| 2 |  | Project kick-off | 0d | 2024-09-23 | 2024-09-23 |  |  |  |
| 3 |  | Initial Project Plan | 0d | 2024-09-27 | 2024-09-27 |  |  |  |
| 4 |  | Project Plan Review 1 | 0d | 2024-10-25 | 2024-10-25 |  |  |  |
| 5 |  | Project Plan Review 2 | 0d | 2024-11-29 | 2024-11-29 |  |  |  |
| 6 |  | Final Review | 0d | 2025-01-24 | 2025-01-24 |  |  |  |
| 7 |  | Demo & Presentation | 0d | 2025-01-31 | 2025-01-31 |  |  |  |
| 9 |  | Project Status | 1d? | 2024-09-23 | 2024-09-23 |  |  |  |
| 10 |  | Collecting Requirement | 3.01d | 2024-09-25 A | 2024-09-30 |  | 33% |  |
| 11 |  | Generate Concept | 4d | 2024-10-01 | 2024-10-04 |  |  |  |
| 13 | 4 | **Mechanical Design** | 75d | 2024-10-07 | 2025-01-17 |  |  | 0d |
| 14 | 4.1 | **Gripper** | 40d | 2024-10-07 | 2024-11-29 |  |  | 0d |
| 15 |  | Design | 10d | 2024-10-07 | 2024-10-18 |  |  |  |
| 16 |  | Design v1 | 5d | 2024-10-28 | 2024-11-01 |  |  |  |
| 17 |  | Build | 15d | 2024-11-04 | 2024-11-22 | 15 |  |  |
| 18 |  | Function Test | 5d | 2024-11-25 | 2024-11-29 | 17 |  | 45d |
| 19 | 4.2 | **Tray** | 21d | 2024-10-07 | 2024-11-04 |  |  | 0d |
| 20 |  | Check Design | 10d | 2024-10-07 | 2024-10-18 |  |  |  |
| 21 |  | Design v1 | 5d | 2024-10-21 | 2024-10-25 | 20 |  | 64d |
| 22 |  | Build | 5d | 2024-10-28 | 2024-11-01 | 21 |  | 64d |
| 23 |  | Function Test | 1d | 2024-11-04 | 2024-11-04 | 22 |  | 64d |
| 24 | 4.3 | **Protection for harsh conditions** | 10d | 2025-01-06 | 2025-01-17 |  |  | 0d |
| 25 |  | Design | 10d | 2025-01-06 | 2025-01-17 |  |  |  |
| 26 | 5 | **Electrical Design** | 15d | 2024-11-18 | 2024-12-06 |  |  | 0d |
| 27 |  | Design | 10d | 2024-11-18 | 2024-11-29 | 32 |  |  |
| 28 |  | Wiring | 4d | 2024-12-02 | 2024-12-05 | 27 |  |  |
| 29 |  | Test | 1d | 2024-12-06 | 2024-12-06 | 28 |  |  |
| 30 | 6 | **Software Design** | 40d | 2024-10-07 | 2024-11-29 |  |  | 0d |
| 31 | 6.1 | **Robot Arm** | 40d | 2024-10-07 | 2024-11-29 |  |  | 0d |
| 32 |  | Select Robot Arm | 10d | 2024-10-07 | 2024-10-18 |  |  |  |
| 33 |  | Code | 20d | 2024-10-28 | 2024-11-22 | 32 |  |  |
| 34 |  | Function Test | 5d | 2024-11-25 | 2024-11-29 | 33 |  | 45d |
| 35 | 7 | **Simulation** | 29d | 2024-10-21 | 2024-11-28 |  |  | 0d |
| 36 |  | Simulation 1 | 4d | 2024-10-21 | 2024-10-24 |  |  |  |
| 37 |  | Simulation 2 | 4d | 2024-11-25 | 2024-11-28 |  |  |  |
| 38 |  | Integration | 5d | 2024-12-09 | 2024-12-13 |  |  |  |
| 39 |  | Reserved for Improvement | 10d | 2025-01-06 | 2025-01-17 |  |  |  |
| 40 |  | Demo rehearsal | 9d | 2025-01-20 | 2025-01-30 | 39 |  |  |

## Version 2 (data date 2024-10-02, saved 2024-10-14, file 20241002 - Project Schedule.mpp)

Last finish stays 2025-01-31. Complete tasks 0 → 3.

Changed:

| ID | Task | Start | Finish | Duration | Complete | Total float | Other |
| --- | --- | --- | --- | --- | --- | --- | --- |
| 1 | **Project Management** | 2024-09-23 A |  |  |  |  |  |
| 2 | Project kick-off | 2024-09-23 A | 2024-09-23 A |  | 0% → 100% |  |  |
| 3 | Initial Project Plan | 2024-09-27 A | 2024-09-27 A |  | 0% → 100% |  |  |
| 10 | Collecting Requirement |  | 2024-09-30 A | 3.01d → 4d | 33% → 100% |  |  |
| 11 | Generate Concept | 2024-10-01 A |  |  | 0% → 50% |  |  |
| 19 | **Bolt Tray** |  | 2024-11-04 → 2024-11-11 (+7d) | 21d → 26d |  |  | was named Tray |
| 20 | Design |  |  |  |  |  | was named Check Design |
| 21 | Design v1 |  | 2024-10-25 → 2024-11-01 (+7d) | 5d → 10d |  | 64d → 59d | constraint none → finish no earlier than 2024-11-01 |
| 22 | Build | 2024-10-28 → 2024-11-04 (+7d) | 2024-11-01 → 2024-11-08 (+7d) |  |  | 64d → 59d |  |
| 23 | Function Test | 2024-11-04 → 2024-11-11 (+7d) | 2024-11-04 → 2024-11-11 (+7d) |  |  | 64d → 59d |  |
| 31 | **Robot Manipulator** |  |  |  |  |  | was named Robot Arm |
| 39 | (Buffer) |  |  |  |  |  | was named Reserved for Improvement |

## Version 3 (data date 2024-10-09, saved 2024-10-14, file 20241009 - Project Schedule.mpp)

Last finish stays 2025-01-31. Complete tasks 3 → 4.

Changed:

| ID | Task | Start | Finish | Duration | Complete | Total float | Other |
| --- | --- | --- | --- | --- | --- | --- | --- |
| 9 | Project Status |  |  | 1d? → 1d |  |  |  |
| 11 | Generate Concept |  | 2024-10-04 A |  | 50% → 100% |  |  |
| 13 | **Mechanical Design** | 2024-10-07 A |  |  | 0% → 8% | 0d → 10d |  |
| 14 | **Gripper** | 2024-10-07 A |  |  | 0% → 9% | 0d → 45d |  |
| 15 | Design | 2024-10-07 A |  |  | 0% → 30% |  |  |
| 19 | **Bolt Tray** | 2024-10-07 A |  |  | 0% → 12% | 0d → 59d |  |
| 20 | Design | 2024-10-07 A |  |  | 0% → 30% |  |  |
| 21 | Design v1 |  |  |  |  |  | constraint finish no earlier than 2024-11-01 → none |
| 30 | **Software Design** | 2024-10-07 A |  |  | 0% → 9% | 0d → 45d |  |
| 31 | **Robot Manipulator** | 2024-10-07 A |  |  | 0% → 9% | 0d → 45d |  |
| 32 | Select Robot Arm | 2024-10-07 A |  |  | 0% → 30% |  |  |

## Version 4 (data date 2024-10-16, saved 2024-10-14, file 20241016 - Project Schedule.mpp)

Last finish stays 2025-01-31. Complete tasks 4 → 5.

Changed:

| ID | Task | Start | Finish | Duration | Complete | Other |
| --- | --- | --- | --- | --- | --- | --- |
| 9 | Project Status |  |  | 1d → 1d? |  |  |
| 13 | **Mechanical Design** |  |  |  | 8% → 23% |  |
| 14 | **Gripper** |  |  |  | 9% → 23% |  |
| 15 | Design |  |  |  | 30% → 80% |  |
| 19 | **Bolt Tray** |  |  |  | 12% → 31% |  |
| 20 | Design |  |  |  | 30% → 80% |  |
| 30 | **Software Design** |  |  |  | 9% → 17% |  |
| 31 | **Robot Manipulator** |  |  |  | 9% → 17% |  |
| 32 | Select Robot Arm |  | 2024-10-18 → 2024-10-11 A (-7d) | 10d → 5d | 30% → 100% |  |
| 35 | **Simulation** | 2024-10-21 → 2024-10-14 A (-7d) |  | 29d → 34d | 0% → 23% |  |
| 36 | Simulation 1 | 2024-10-21 → 2024-10-14 A (-7d) |  | 4d → 9d | 0% → 33% | resources none → Daniel [20%] |

## Version 5 (data date 2024-10-24, saved 2024-10-22, file 20241024 - Project Schedule.mpp)

Last finish stays 2025-01-31. Complete tasks 5 → 8.

Changed:

| ID | Task | Start | Finish | Duration | Complete | Total float | Predecessors | Other |
| --- | --- | --- | --- | --- | --- | --- | --- | --- |
| 13 | **Mechanical Design** |  |  |  | 23% → 25% | 10d → 5d |  |  |
| 14 | **Gripper** |  |  |  | 23% → 29% | 45d → 40d |  |  |
| 15 | Design |  | 2024-10-18 A |  | 80% → 100% |  |  |  |
| 19 | **Bolt Tray** |  | 2024-11-11 → 2024-11-29 (+18d) | 26d → 40d | 31% → 29% | 59d → 40d |  |  |
| 20 | Design |  | 2024-10-18 A |  | 80% → 100% |  |  |  |
| 21 | Design v1 | 2024-10-21 → 2024-10-28 (+7d) |  | 10d → 5d |  |  | 20 → none | constraint none → start no earlier than 2024-10-28 |
| 22 | Build |  | 2024-11-08 → 2024-11-28 (+20d) | 5d → 19d |  | 59d → 40d |  |  |
| 23 | Function Test | 2024-11-11 → 2024-11-29 (+18d) | 2024-11-11 → 2024-11-29 (+18d) |  |  | 59d → 40d |  |  |
| 26 | **Electrical Design** | 2024-11-18 → 2024-12-02 (+14d) | 2024-12-06 → 2024-12-11 (+5d) | 15d → 8d |  |  |  |  |
| 27 | Design | 2024-11-18 → 2024-12-02 (+14d) | 2024-11-29 → 2024-12-06 (+7d) | 10d → 5d |  |  |  |  |
| 28 | Wiring | 2024-12-02 → 2024-12-09 (+7d) | 2024-12-05 → 2024-12-10 (+5d) | 4d → 2d |  |  |  |  |
| 29 | Test | 2024-12-06 → 2024-12-11 (+5d) | 2024-12-06 → 2024-12-11 (+5d) |  |  |  |  |  |
| 35 | **Simulation** |  |  |  | 23% → 69% |  |  |  |
| 36 | Simulation 1 |  | 2024-10-24 A |  | 33% → 100% |  |  | resources Daniel [20%] → Daniel [20%]; Maxi [20%] |
| 38 | Integration | 2024-12-09 → 2024-12-12 (+3d) | 2024-12-13 → 2024-12-18 (+5d) |  |  |  | none → 18, 23, 29, 34 | resources none → Daniel [20%]; Eren [20%]; Maxi [20%] |

## Version 6 (data date 2024-10-30, saved 2024-10-31, file 20241030 - Project Schedule.mpp)

Last finish stays 2025-01-31. Complete tasks 8 → 9.

Changed:

| ID | Task | Start | Finish | Duration | Complete | Total float | Predecessors | Other |
| --- | --- | --- | --- | --- | --- | --- | --- | --- |
| 4 | Project Plan Review 1 | 2024-10-25 A | 2024-10-25 A |  | 0% → 100% |  |  |  |
| 14 | **Gripper** |  | 2024-11-29 → 2024-12-12 (+13d) | 40d → 49d |  | 40d → 24d |  |  |
| 16 | Design v1 | 2024-10-28 → 2024-11-08 (+11d) | 2024-11-01 → 2024-11-14 (+13d) |  |  |  |  |  |
| 17 | Build | 2024-11-04 → 2024-11-15 (+11d) | 2024-11-22 → 2024-12-05 (+13d) |  |  |  | 15 → 16 |  |
| 18 | Function Test | 2024-11-25 → 2024-12-06 (+11d) | 2024-11-29 → 2024-12-12 (+13d) |  |  | 45d → 31d |  |  |
| 19 | **Bolt Tray** |  | 2024-11-29 → 2024-12-12 (+13d) | 40d → 49d |  | 40d → 24d |  |  |
| 21 | Design v1 | 2024-10-28 → 2024-11-08 (+11d) | 2024-11-01 → 2024-11-14 (+13d) |  |  | 59d → 31d |  | constraint start no earlier than 2024-10-28 → start no earlier than 2024-11-08 |
| 22 | Build | 2024-11-04 → 2024-11-15 (+11d) | 2024-11-28 → 2024-12-11 (+13d) |  |  | 40d → 31d |  |  |
| 23 | Function Test | 2024-11-29 → 2024-12-12 (+13d) | 2024-11-29 → 2024-12-12 (+13d) |  |  | 40d → 31d |  |  |
| 26 | **Electrical Design** | 2024-12-02 → 2025-01-06 (+35d) | 2024-12-11 → 2025-01-15 (+35d) |  |  |  |  |  |
| 27 | Design | 2024-12-02 → 2025-01-06 (+35d) | 2024-12-06 → 2025-01-10 (+35d) |  |  |  |  |  |
| 28 | Wiring | 2024-12-09 → 2025-01-13 (+35d) | 2024-12-10 → 2025-01-14 (+35d) |  |  |  |  |  |
| 29 | Test | 2024-12-11 → 2025-01-15 (+35d) | 2024-12-11 → 2025-01-15 (+35d) |  |  |  |  |  |
| 30 | **Software Design** |  | 2024-11-29 → 2024-12-12 (+13d) | 40d → 49d |  | 40d → 24d |  |  |
| 31 | **Robot Manipulator** |  | 2024-11-29 → 2024-12-12 (+13d) | 40d → 49d |  | 40d → 24d |  |  |
| 33 | Code | 2024-10-28 → 2024-11-08 (+11d) | 2024-11-22 → 2024-12-05 (+13d) |  |  |  |  |  |
| 34 | Function Test | 2024-11-25 → 2024-12-06 (+11d) | 2024-11-29 → 2024-12-12 (+13d) |  |  | 45d → 31d |  |  |
| 38 | Integration | 2024-12-12 → 2025-01-16 (+35d) | 2024-12-18 → 2025-01-22 (+35d) |  |  |  |  |  |
| 40 | Demo rehearsal | 2025-01-20 → 2025-01-23 (+3d) |  | 9d → 6d |  |  | 39 → 38 |  |

## Version 7 (data date 2024-11-13, saved 2024-11-16, file 20241113 - Project Schedule.mpp)

Last finish stays 2025-01-31. Complete tasks 9 → 10.

Removed: 39 (Buffer)

Changed:

| ID | Task | Start | Finish | Duration | Complete | Total float | Predecessors | Other |
| --- | --- | --- | --- | --- | --- | --- | --- | --- |
| 1 | **Project Management** |  |  |  | 0% → 99% |  |  |  |
| 9 | Project Status | 2024-09-23 A | 2024-09-23 A | 1d? → 1d | 0% → 100% |  |  |  |
| 13 | **Mechanical Design** |  |  |  | 25% → 37% |  |  |  |
| 14 | **Gripper** |  | 2024-12-12 → 2024-12-05 (-7d) | 49d → 44d | 29% → 47% | 24d → 29d |  |  |
| 16 | Design v1 | 2024-11-08 → 2024-10-07 (-32d) | 2024-11-14 → 2024-10-07 (-38d) | 5d → 1d |  |  |  | resources Maxi [20%] → none |
| 17 | Build | 2024-11-15 → 2024-11-08 A (-7d) | 2024-12-05 → 2024-11-28 (-7d) |  | 0% → 27% |  | 16 → 15 |  |
| 18 | Function Test | 2024-12-06 → 2024-11-29 (-7d) | 2024-12-12 → 2024-12-05 (-7d) |  |  | 31d → 29d |  |  |
| 19 | **Bolt Tray** |  |  |  | 29% → 40% |  |  |  |
| 21 | Design v1 | 2024-11-08 A |  |  | 0% → 80% | 31d → 24d |  |  |
| 30 | **Software Design** |  |  |  | 17% → 33% |  |  |  |
| 31 | **Robot Manipulator** |  |  |  | 17% → 33% |  |  |  |
| 33 | Code | 2024-11-08 → 2024-11-29 (+21d) |  | 20d → 5d |  |  |  |  |
| 35 | **Simulation** |  |  |  | 69% → 41% |  |  |  |
| 37 | Simulation 2 | 2024-11-25 → 2024-11-12 A (-13d) |  | 4d → 13d |  |  |  | resources none → Daniel [20%] |

## Version 8 (data date 2024-11-20, saved 2024-11-16, file 20241120 - Project Schedule.mpp)

Last finish stays 2025-01-31. Complete tasks 10 → 11.

Removed: 16 Design v1

Changed:

| ID | Task | Start | Finish | Complete | Total float |
| --- | --- | --- | --- | --- | --- |
| 13 | **Mechanical Design** |  |  | 37% → 51% |  |
| 14 | **Gripper** |  |  | 47% → 63% |  |
| 16 | Build |  |  | 27% → 60% |  |
| 18 | **Bolt Tray** |  |  | 40% → 54% |  |
| 20 | Design v1 |  | 2024-11-14 A | 80% → 100% | 24d → none |
| 21 | Build | 2024-11-15 A |  | 0% → 21% |  |
| 34 | **Simulation** |  |  | 41% → 73% |  |
| 36 | Simulation 2 |  |  | 0% → 54% |  |

## Version 9 (data date 2024-11-28, saved 2024-11-27, file 20241128 - Project Schedule.mpp)

Last finish stays 2025-01-31. Complete tasks 11 → 18.

Added:

| ID | Task | Duration | Start | Finish | Resources |
| --- | --- | --- | --- | --- | --- |
| 23 | Batch Build | 2d | 2025-01-06 | 2025-01-07 | Eren [5%] |
| 35 | Code for Integration | 8d | 2025-01-06 | 2025-01-15 | Daniel [20%] |

Changed:

| ID | Task | Start | Finish | Duration | Complete | Total float | Predecessors | Other |
| --- | --- | --- | --- | --- | --- | --- | --- | --- |
| 13 | **Mechanical Design** |  | 2025-01-17 → 2025-01-07 (-10d) | 75d → 67d | 51% → 84% |  |  |  |
| 14 | **Gripper** |  | 2024-12-05 → 2024-11-22 A (-13d) | 44d → 35d | 63% → 100% | 29d → none |  |  |
| 16 | Build |  | 2024-11-28 → 2024-11-21 A (-7d) | 15d → 10d | 60% → 100% |  |  |  |
| 17 | Function Test | 2024-11-29 → 2024-11-22 A (-7d) | 2024-12-05 → 2024-11-22 A (-13d) | 5d → 1d | 0% → 100% | 29d → none |  |  |
| 18 | **Bolt Tray, Plate Stack Holder** |  | 2024-12-12 → 2025-01-07 (+26d) | 49d → 67d | 54% → 92% | 24d → 0d |  | was named Bolt Tray |
| 21 | Build |  | 2024-12-11 → 2024-11-22 A (-19d) | 19d → 6d | 21% → 100% | 24d → none |  | constraint none → finish no earlier than 2024-12-11 |
| 22 | Unit Test | 2024-12-12 → 2024-11-25 A (-17d) | 2024-12-12 → 2024-11-25 A (-17d) |  | 0% → 100% | 24d → none |  | was named Function Test |
| 24 | **Protection for harsh conditions** | 2025-01-06 → 2024-12-12 (-25d) | 2025-01-17 → 2024-12-19 (-29d) | 10d → 6d |  |  |  |  |
| 25 | Design | 2025-01-06 → 2024-12-12 (-25d) | 2025-01-17 → 2024-12-19 (-29d) | 10d → 6d |  |  |  | resources none → Daniel [20%]; Maxi [20%]; Eren [20%] |
| 27 | Design |  |  |  |  |  |  | resources Eren [20%] → Eren [15%] |
| 28 | Wiring |  |  |  |  |  | 27 → none | resources Eren [20%] → none |
| 29 | Test |  |  |  |  |  | 28 → none | resources Eren [20%] → none |
| 30 | **Software Design** |  | 2024-12-12 → 2025-01-15 (+34d) | 49d → 73d | 33% → 53% | 24d → 0d |  |  |
| 31 | **Robot Manipulator** |  | 2024-12-12 → 2025-01-15 (+34d) | 49d → 73d | 33% → 53% | 24d → 0d |  |  |
| 33 | Code | 2024-11-29 → 2024-11-19 A (-10d) | 2024-12-05 → 2024-11-21 A (-14d) | 5d → 3d | 0% → 100% |  |  |  |
| 34 | Function Test | 2024-12-06 → 2024-11-22 A (-14d) | 2024-12-12 → 2024-11-22 A (-20d) | 5d → 1d | 0% → 100% | 24d → none |  | constraint none → finish no earlier than 2024-11-22 |
| 36 | **Simulation** |  | 2024-11-28 → 2024-11-18 A (-10d) | 34d → 26d | 73% → 100% | 0d → none |  |  |
| 38 | Simulation 2 |  | 2024-11-28 → 2024-11-18 A (-10d) | 13d → 5d | 54% → 100% |  |  |  |
| 39 | Integration |  |  |  |  |  | 17, 22, 29, 34 → 17, 22, 35 |  |
| 40 | Demo rehearsal |  | 2025-01-30 → 2025-01-24 (-6d) | 6d → 2d |  |  |  |  |

## Version 10 (data date 2025-01-13, saved 2025-01-13, file 20250113 - Project Schedule.mpp)

Last finish stays 2025-01-31. Complete tasks 18 → 21.

Removed: 28 Wiring; 29 Test

Changed:

| ID | Task | Start | Finish | Duration | Complete | Total float | Predecessors | Other |
| --- | --- | --- | --- | --- | --- | --- | --- | --- |
| 5 | Project Plan Review 2 | 2024-11-29 A | 2024-11-29 A |  | 0% → 100% |  |  |  |
| 13 | **Mechanical Design** |  | 2025-01-07 → 2025-01-10 A (+3d) | 67d → 70d | 84% → 100% | 0d → none |  |  |
| 18 | **Bolt Tray, Plate Stack Holder** |  | 2025-01-07 → 2025-01-10 A (+3d) | 67d → 70d | 92% → 100% | 0d → none |  |  |
| 23 | Batch Build | 2025-01-06 → 2025-01-09 A (+3d) | 2025-01-07 → 2025-01-10 A (+3d) |  | 0% → 100% |  |  |  |
| 24 | **Protection for harsh conditions** | 2024-12-12 A | 2024-12-19 A |  | 0% → 100% | 0d → none |  |  |
| 25 | Design | 2024-12-12 A | 2024-12-19 A |  | 0% → 100% |  |  |  |
| 26 | **Electrical Design** |  | 2025-01-15 → 2025-01-10 (-5d) | 8d → 5d |  |  |  |  |
| 27 | Design |  |  |  |  |  | 30 → none | resources Eren [15%] → none |
| 28 | **Software Design** |  |  |  | 53% → 88% |  |  |  |
| 29 | **Robot Manipulator** |  |  |  | 53% → 88% |  |  |  |
| 33 | Code for Integration | 2025-01-06 A |  |  | 0% → 75% |  |  |  |
